# Deployment projectplan

Schedule from MS Project, 2009-01-08 to 2009-02-18.
astrowix

## Calendars

- Standard: Mon-Fri 09:30-13:00, 13:30-17:30; Sat-Sun off. Exceptions (off unless hours are given): 2009-01-26 (Republic Day).

## Resources

| Resource |
| --- |
| AstroWix Functional Consultant |
| AstroWix Technical Consultant |
| Airtel Manager |
| Airtel Project Manager |
| AstroWix Team |
| Nidhi |
| Client Team |

## Schedule

| ID | WBS | Task | Type | Duration | Start | Finish | Predecessors | Total slack | Free slack | Resources | Work |
| --- | --- | --- | --- | --- | --- | --- | --- | --- | --- | --- | --- |
| 1 | 1 | **EPM implementation Plan** |  | 27d | 2009-01-08 08:00 | 2009-02-18 16:00 |  | 0d |  |  | 608h |
| 2 | 1.1 | **Businees Need** |  | 4d | 2009-01-08 09:30 | 2009-01-14 11:30 |  | 0d |  |  | 56h |
| 3 | 1.1.1 | Preparation for[Client] Meeting |  | 1d | 2009-01-08 09:30 | 2009-01-09 10:00 |  | 0d |  | AstroWix Team | 8h |
| 4 | 1.1.2 | KickOff Meeting |  | 1d | 2009-01-09 10:00 | 2009-01-12 10:30 | 3 | 0d |  | AstroWix Team; Client Team | 16h |
| 5 | 1.1.3 | PO Sent to AstroWix |  | 2d | 2009-01-12 10:30 | 2009-01-14 11:30 | 4 | 0d |  | AstroWix Team; Client Team | 32h |
| 6 | 1.2 | **EPM Need\Requirement Gathering** |  | 17d | 2009-01-08 08:00 | 2009-02-04 10:30 |  | 4d |  |  | 200h |
| 7 | 1.2.1 | Project Identification |  | 1d | 2009-01-14 11:30 | 2009-01-15 12:00 | 5 | 0d |  | AstroWix Functional Consultant | 8h |
| 8 | 1.2.2 | **Requirement Gathering** |  | 12d | 2009-01-15 12:00 | 2009-02-04 10:30 |  | 0d |  |  | 192h |
| 9 | 1.2.2.1 | **Interviewees** |  | 12d | 2009-01-15 12:00 | 2009-02-04 10:30 |  | 0d |  |  | 192h |
| 10 | 1.2.2.1.1 | Project Manager |  | 3d | 2009-01-15 12:00 | 2009-01-20 14:00 | 7 | 0d |  | AstroWix Functional Consultant; AstroWix Technical Consultant | 48h |
| 11 | 1.2.2.1.2 | IT Manager |  | 3d | 2009-01-20 14:00 | 2009-01-23 15:30 | 10 | 0d |  | AstroWix Functional Consultant; AstroWix Technical Consultant | 48h |
| 12 | 1.2.2.1.3 | Top Executives |  | 2d | 2009-01-23 15:30 | 2009-01-28 16:30 | 11 | 0d |  | AstroWix Functional Consultant; AstroWix Technical Consultant | 32h |
| 13 | 1.2.2.1.4 | Team Member |  | 2d | 2009-01-28 16:30 | 2009-01-30 17:30 | 12 | 0d |  | AstroWix Functional Consultant; AstroWix Technical Consultant | 32h |
| 14 | 1.2.2.1.5 | Enterprise Implementation Framework Document |  | 2d | 2009-02-02 09:30 | 2009-02-04 10:30 | 13 | 0d |  | AstroWix Functional Consultant; AstroWix Technical Consultant | 32h |
| 15 | 1.2.3 | Deliverables-Architecture Design Specification Document | milestone | 0d | 2009-01-08 08:00 | 2009-01-08 08:00 |  | 27d |  |  |  |
| 16 | 1.3 | **EPM Single Server Deployment** |  | 3d | 2009-01-08 09:30 | 2009-01-13 11:00 |  | 24d |  |  | 24h |
| 17 | 1.3.1 | Windows with SP2 |  | 3h | 2009-01-08 09:30 | 2009-01-08 12:30 |  | 13.5d | 0d | AstroWix Technical Consultant | 3h |
| 18 | 1.3.2 | Internet Information Services configuration |  | 2h | 2009-01-08 12:30 | 2009-01-08 15:00 | 17 | 13.5d | 0d | AstroWix Technical Consultant | 2h |
| 19 | 1.3.3 | Domain Configuration |  | 3h | 2009-01-08 15:00 | 2009-01-09 10:00 | 18 | 13.5d | 0d | AstroWix Technical Consultant | 3h |
| 20 | 1.3.4 | Microsoft SQL Server™ installation with SP2 |  | 4h | 2009-01-09 10:00 | 2009-01-09 14:30 | 19 | 13.5d | 0d | AstroWix Technical Consultant | 4h |
| 21 | 1.3.5 | Microsoft Project 2007 Server with SP1 & Client installation |  | 4h | 2009-01-09 14:30 | 2009-01-12 10:30 | 20 | 13.5d | 0d | AstroWix Technical Consultant | 4h |
| 22 | 1.3.6 | Microsoft Windows® SharePoint™ Services configuration |  | 2h | 2009-01-12 10:30 | 2009-01-12 12:30 | 21 | 24d | 0d | AstroWix Technical Consultant | 2h |
| 23 | 1.3.7 | Microsoft EPM Solution Configuration |  | 2h | 2009-01-12 12:30 | 2009-01-12 15:00 | 22 | 24d | 0d | AstroWix Technical Consultant | 2h |
| 24 | 1.3.8 | Forms Authentication |  | 2h | 2009-01-12 15:00 | 2009-01-12 17:00 | 23 | 24d | 0d | AstroWix Technical Consultant | 2h |
| 25 | 1.3.9 | 1 clients configured to the Project Server |  | 2h | 2009-01-12 17:00 | 2009-01-13 11:00 | 24 | 24d |  | AstroWix Technical Consultant | 2h |

Notes:
- 10: Questionnaire document
- 11: Questionnaire document
- 12: Questionnaire document
- 13: Questionnaire document
- 15: 1)Requirement Document

| ID | WBS | Task | Duration | Start | Finish | Predecessors | Total slack | Free slack | Resources | Work |
| --- | --- | --- | --- | --- | --- | --- | --- | --- | --- | --- |
| 26 | 1.4 | **EPM Configuration & Mapping** | 27d | 2009-01-08 09:30 | 2009-02-18 16:00 |  | 0d |  |  | 256h |
| 27 | 1.4.1 | Identification of one Project template | 1d | 2009-02-04 10:30 | 2009-02-05 11:00 | 14 | 0d |  | AstroWix Functional Consultant | 8h |
| 28 | 1.4.2 | Creating Project Template | 1d | 2009-02-04 10:30 | 2009-02-05 11:00 | 27SS | 0d |  | AstroWix Functional Consultant; AstroWix Technical Consultant | 16h |
| 29 | 1.4.3 | Set Enterprise features | 1d | 2009-02-05 11:00 | 2009-02-06 11:30 | 28 | 0d |  | AstroWix Technical Consultant | 8h |
| 30 | 1.4.4 | Create Enterprise Global | 0.5d | 2009-02-06 11:30 | 2009-02-06 16:00 | 29 | 0d |  | AstroWix Technical Consultant | 4h |
| 31 | 1.4.5 | Create enterprise resource pool | 0.5d | 2009-02-06 16:00 | 2009-02-09 12:00 | 30 | 0d |  | AstroWix Technical Consultant | 4h |
| 32 | 1.4.6 | Create Enterprise Calendars | 0.5d | 2009-02-09 12:00 | 2009-02-09 16:30 | 31 | 0d |  | AstroWix Technical Consultant | 4h |
| 33 | 1.4.7 | **PWA Customization** | 2d | 2009-02-09 16:30 | 2009-02-11 17:30 |  | 0d |  |  | 28h |
| 34 | 1.4.7.1 | Project Center | 4h | 2009-02-09 16:30 | 2009-02-10 12:30 | 32 | 0d |  | AstroWix Functional Consultant; AstroWix Technical Consultant | 8h |
| 35 | 1.4.7.2 | Project Details | 2h | 2009-02-10 12:30 | 2009-02-10 15:00 | 34 | 0d |  | AstroWix Functional Consultant; AstroWix Technical Consultant | 4h |
| 36 | 1.4.7.3 | Workspace Customization | 1h | 2009-02-10 15:00 | 2009-02-10 16:00 | 35 | 0d |  | AstroWix Functional Consultant; AstroWix Technical Consultant | 2h |
| 37 | 1.4.7.4 | Upload Documents in Shared Doc | 1h | 2009-02-10 16:00 | 2009-02-10 17:00 | 36 | 0d |  | AstroWix Functional Consultant; AstroWix Technical Consultant | 2h |
| 38 | 1.4.7.5 | Data Analysis View | 2h | 2009-02-10 17:00 | 2009-02-11 11:00 | 37 | 0d |  | AstroWix Functional Consultant; AstroWix Technical Consultant | 4h |
| 39 | 1.4.7.6 | Issues and Risks | 2h | 2009-02-11 11:00 | 2009-02-11 13:00 | 38 | 0d |  | AstroWix Functional Consultant; AstroWix Technical Consultant | 4h |
| 40 | 1.4.7.7 | Look and Feel customization of Project Web Access | 4h | 2009-02-11 13:30 | 2009-02-11 17:30 | 39 | 0d |  | AstroWix Functional Consultant | 4h |
| 41 | 1.4.8 | **SQL Reports** | 4.5d | 2009-02-12 09:30 | 2009-02-18 16:00 |  | 0d |  |  | 72h |
| 42 | 1.4.8.1 | Milestone Status- Time Variance | 1d | 2009-02-12 09:30 | 2009-02-13 10:00 | 40 | 0d |  | AstroWix Technical Consultant; AstroWix Functional Consultant | 16h |
| 43 | 1.4.8.2 | Milestone Status- Number Variance | 4h | 2009-02-13 10:00 | 2009-02-13 14:30 | 42 | 0d |  | AstroWix Technical Consultant; AstroWix Functional Consultant | 8h |
| 44 | 1.4.8.3 | Milestone Status- Duration Variance | 6h | 2009-02-13 14:30 | 2009-02-16 12:30 | 43 | 0d |  | AstroWix Technical Consultant; AstroWix Functional Consultant | 12h |
| 45 | 1.4.8.4 | Issues Dashboard | 6h | 2009-02-16 12:30 | 2009-02-17 11:00 | 44 | 0d |  | AstroWix Technical Consultant; AstroWix Functional Consultant | 12h |
| 46 | 1.4.8.5 | Escalated Issues Dashboard | 3h | 2009-02-17 11:00 | 2009-02-17 14:30 | 45 | 0d |  | AstroWix Technical Consultant; AstroWix Functional Consultant | 6h |
| 47 | 1.4.8.6 | Risk Dashboard | 6h | 2009-02-17 14:30 | 2009-02-18 12:30 | 46 | 0d |  | AstroWix Technical Consultant; AstroWix Functional Consultant | 12h |
| 48 | 1.4.8.7 | Escalated Risk Dashboard | 3h | 2009-02-18 12:30 | 2009-02-18 16:00 | 47 | 0d |  | AstroWix Technical Consultant; AstroWix Functional Consultant | 6h |
| 49 | 1.4.9 | **Perform Client Desktop Deployment (Single PC)** | 1d | 2009-02-09 16:30 | 2009-02-10 17:00 |  | 5.5d |  |  | 48h |
| 50 | 1.4.9.1 | **Configure Internet Explorer** | 1d | 2009-02-09 16:30 | 2009-02-10 17:00 |  | 5.5d |  |  | 48h |
| 51 | 1.4.9.1.1 | Create the Enterprise Accounts | 1d | 2009-02-09 16:30 | 2009-02-10 17:00 | 32 | 5.5d | 0d | AstroWix Technical Consultant | 8h |
| 52 | 1.4.9.1.2 | Connecting MS Project Professional 2007 with MS Project Server 2007 | 1d | 2009-02-09 16:30 | 2009-02-10 17:00 | 51SS | 5.5d |  | AstroWix Technical Consultant | 8h |
| 53 | 1.4.9.1.3 | Configure trusted sites | 1d | 2009-02-09 16:30 | 2009-02-10 17:00 | 51SS | 5.5d |  | AstroWix Technical Consultant | 8h |
| 54 | 1.4.9.1.4 | Configure automatic download of ActiveX in trusted sites zone | 1d | 2009-02-09 16:30 | 2009-02-10 17:00 | 51SS | 5.5d |  | AstroWix Technical Consultant | 8h |
| 55 | 1.4.9.1.5 | Allow cookies | 1d | 2009-02-09 16:30 | 2009-02-10 17:00 | 51SS | 5.5d |  | AstroWix Technical Consultant | 8h |
| 56 | 1.4.9.1.6 | Proxy Setting | 1d | 2009-02-09 16:30 | 2009-02-10 17:00 | 51SS | 5.5d |  | AstroWix Technical Consultant | 8h |
| 57 | 1.4.10 | Solution Validation | 1d | 2009-01-08 09:30 | 2009-01-09 10:00 |  | 16d | 0d | AstroWix Functional Consultant; AstroWix Technical Consultant | 16h |
| 58 | 1.4.11 | Refine & optimized EPM based on stakeholder feedback | 2d | 2009-01-09 10:00 | 2009-01-13 11:00 | 57 | 16d | 0d | AstroWix Functional Consultant; AstroWix Technical Consultant | 32h |
| 59 | 1.4.12 | UAT Sign off | 1d | 2009-01-13 11:00 | 2009-01-14 11:30 | 58 | 16d |  | AstroWix Technical Consultant; AstroWix Functional Consultant | 16h |

Notes:
- 57: Build Guide
- 59: UAT Document

| ID | WBS | Task | Duration | Start | Finish | Predecessors | Total slack | Free slack | Resources | Work |
| --- | --- | --- | --- | --- | --- | --- | --- | --- | --- | --- |
| 60 | 1.5 | **Training** | 4d | 2009-01-14 11:30 | 2009-01-20 14:00 |  | 16d |  |  | 24h |
| 61 | 1.5.1 | Project Managers | 2d | 2009-01-14 11:30 | 2009-01-16 12:30 | 59 | 16d | 0d | AstroWix Functional Consultant | 16h |
| 62 | 1.5.2 | Team Members | 1d | 2009-01-16 12:30 | 2009-01-19 13:00 | 61 | 16d | 0d | AstroWix Functional Consultant | 8h |
| 63 | 1.5.3 | Executive | 1d | 2009-01-19 13:30 | 2009-01-20 14:00 | 62 | 16d | 0d |  |  |
| 64 | 1.6 | **Refining and Optimize System** | 3d | 2009-01-20 14:00 | 2009-01-23 15:30 |  | 16d |  |  | 48h |
| 65 | 1.6.1 | EPM Implementation Complete | 3d | 2009-01-20 14:00 | 2009-01-23 15:30 | 63 | 16d |  | AstroWix Functional Consultant; AstroWix Technical Consultant | 48h |

Notes:
- 65: 1) EIF document
