# Training Rollout Initiative and Plan

Schedule from MS Project, 2017-05-08 to 2019-07-10.

## Calendars

- India Project Calendar: Mon-Fri 08:00-12:00, 13:00-17:00; Sat-Sun off. Exceptions (off unless hours are given): 2017-07-04 (India US Friendship Day, recurring), 2017-08-15 (Indian Indepence Day, recurring).

## Resources

| Resource |
| --- |
| T.Res1 |
| T.Res2 |
| T.Res3 |
| T.Res4 |
| T.Res5 |
| T.Res6 |
| T.Res7 |
| T.Res8 |
| T.Res10 |

## Schedule

| ID | WBS | Task | Type | Duration | Start | Finish | Predecessors | Baseline start | Baseline finish | Baseline duration | Total slack | Free slack | Constraint | Resources | Work |
| --- | --- | --- | --- | --- | --- | --- | --- | --- | --- | --- | --- | --- | --- | --- | --- |
| 1 | 1 | **TRIP - Stage 1 - Project Planning** |  | 20.68d | 2017-05-08 | 2017-06-05 |  | 2017-05-08 | 2017-06-05 | 20.68d | 0d |  |  |  | 364h |
| 2 | 1.1 | Define project objectives and describe mission statement |  | 2d | 2017-05-08 | 2017-05-09 |  | 2017-05-08 | 2017-05-09 | 2d | 549.75d | 0d |  | T.Res1 | 16h |
| 3 | 1.2 | Ensure total participation by training team support staff |  | 1d | 2017-05-08 | 2017-05-08 |  | 2017-05-08 | 2017-05-08 | 1d | 0d |  |  | T.Res3 | 8h |
| 4 | 1.3 | **Identify Departments or End-User Community to be Trained** |  | 7d | 2017-05-09 | 2017-05-17 |  | 2017-05-09 | 2017-05-17 | 7d | 0d |  |  |  | 124h |
| 5 | 1.3.1 | Create list of target departments |  | 1d | 2017-05-10 | 2017-05-10 | 2 | 2017-05-10 | 2017-05-10 | 1d | 549.75d | 0d |  | T.Res3 | 8h |
| 6 | 1.3.2 | Perform departmental training needs analysis |  | 7d | 2017-05-09 | 2017-05-17 | 3 | 2017-05-09 | 2017-05-17 | 7d | 0d |  |  | T.Res4 | 56h |
| 7 | 1.3.3 | Compile results and present findings to training coordinator |  | 2d | 2017-05-12 | 2017-05-15 | 6FS-4d | 2017-05-12 | 2017-05-15 | 2d | 0d |  |  | T.Res5 | 16h |
| 8 | 1.3.4 | Prioritize training delivery according to critical need |  | 2d | 2017-05-16 | 2017-05-17 | 7 | 2017-05-16 | 2017-05-17 | 2d | 0d |  |  | T.Res6 | 16h |
| 9 | 1.3.5 | Inform department heads of the training initiative |  | 2d | 2017-05-11 | 2017-05-12 | 5 | 2017-05-11 | 2017-05-12 | 2d | 560.25d |  |  | T.Res7 | 16h |
| 10 | 1.3.6 | Determine if training can be done in-house or outsourced |  | 1.5d | 2017-05-11 | 2017-05-12 | 5 | 2017-05-11 | 2017-05-12 | 1.5d | 549.75d | 5.17d |  | T.Res8 | 12h |
| 11 | 1.4 | **Seek Input from Training Vendor** |  | 11d | 2017-05-19 | 2017-06-05 |  | 2017-05-19 | 2017-06-05 | 11d | 544.58d |  |  |  | 104h |
| 12 | 1.4.1 | Define vendor deliverables - can they meet our needs? |  | 1d | 2017-05-19 | 2017-05-22 | 10 | 2017-05-19 | 2017-05-22 | 1d | 544.58d | 0d | start no earlier than 2017-05-19 | T.Res8 | 8h |
| 13 | 1.4.2 | Obtain vendor commitment to training rollout schedule |  | 3d | 2017-05-22 | 2017-05-25 | 12 | 2017-05-22 | 2017-05-25 | 3d | 544.58d | 0d |  | T.Res10 | 24h |
| 14 | 1.4.3 | Review and customize training material |  | 7d | 2017-05-25 | 2017-06-05 | 12, 13 | 2017-05-25 | 2017-06-05 | 7d | 544.58d |  | start no earlier than 2017-05-25 | T.Res10 | 56h |
| 15 | 1.4.4 | Obtain approval for purchase orders to cover vendor invoices |  | 2d | 2017-05-25 | 2017-05-29 | 13 | 2017-05-25 | 2017-05-29 | 2d | 549.58d |  |  | T.Res1 | 16h |
| 16 | 1.5 | **Perform End-User Skill Assessment** |  | 11d | 2017-05-18 | 2017-06-01 |  | 2017-05-18 | 2017-06-01 | 11d | 0d |  |  |  | 112h |
| 17 | 1.5.1 | Create a list of training recipients by department |  | 2d | 2017-05-18 | 2017-05-19 | 8 | 2017-05-18 | 2017-05-19 | 2d | 0d |  |  | T.Res3 | 16h |
| 18 | 1.5.2 | Send skill assessment forms to department heads |  | 2d | 2017-05-22 | 2017-05-23 | 17 | 2017-05-22 | 2017-05-23 | 2d | 0d |  |  | T.Res3 | 16h |
| 19 | 1.5.3 | Collect and compile results by department |  | 5d | 2017-05-24 | 2017-05-30 | 18 | 2017-05-24 | 2017-05-30 | 5d | 0d |  |  | T.Res4 | 40h |
| 20 | 1.5.4 | Initiate end-user placement matrix |  | 3d | 2017-05-29 | 2017-05-31 | 19FS-2d | 2017-05-29 | 2017-05-31 | 3d | 0d |  |  | T.Res5 | 24h |
| 21 | 1.5.5 | Finalize project budget |  | 2d | 2017-05-31 | 2017-06-01 | 19 | 2017-05-31 | 2017-06-01 | 2d | 546.25d | 0d |  | T.Res6 | 16h |
| 22 | 1.6 | Stage 1 - TRIP - End project initiation | milestone | 0d | 2017-06-01 | 2017-06-01 | 21 | 2017-06-01 | 2017-06-01 | 0d | 546.25d |  |  |  |  |
| 23 | 2 | **TRIP - Stage 2 - Project Commencement** |  | 16d | 2017-06-01 | 2017-06-22 |  | 2017-06-01 | 2017-06-22 | 16d | 0d |  |  |  | 328h |
| 24 | 2.1 | **Prepare Rollout Schedule and Create Awareness** |  | 16d | 2017-06-01 | 2017-06-22 |  | 2017-06-01 | 2017-06-22 | 16d | 0d |  |  |  | 216h |
| 25 | 2.1.1 | Determine course dates, start and end times, and locations |  | 3d | 2017-06-01 | 2017-06-05 | 20 | 2017-06-01 | 2017-06-05 | 3d | 0d |  |  | T.Res1 | 24h |
| 26 | 2.1.2 | Post course outlines and schedule on corporate intranet |  | 1d | 2017-06-06 | 2017-06-07 | 25FS+0.5d | 2017-06-06 | 2017-06-07 | 1d | 537.75d | 0d |  | T.Res1 | 8h |
| 27 | 2.1.3 | Establish support through help desk for post-training questions |  | 1d | 2017-06-06 | 2017-06-06 | 25 | 2017-06-06 | 2017-06-06 | 1d | 543.25d |  |  | T.Res3 | 8h |
| 28 | 2.1.4 | Reserve training rooms |  | 1d | 2017-06-06 | 2017-06-06 | 25 | 2017-06-06 | 2017-06-06 | 1d | 543.25d |  |  | T.Res4 | 8h |
| 29 | 2.1.5 | Coordinate with information technology team for optimal workstation and equipment performance |  | 1d | 2017-06-07 | 2017-06-08 | 26 | 2017-06-07 | 2017-06-08 | 1d | 541.75d |  |  | T.Res3 | 8h |
| 30 | 2.1.6 | Order training manuals and necessary material |  | 7d | 2017-06-06 | 2017-06-14 | 25 | 2017-06-06 | 2017-06-14 | 7d | 537.25d |  |  | T.Res6 | 56h |

Notes:
- 1: Assumptions: / ·Software will be rolled out to participant's workstations during training. / ·HR and training management has given their approval and allocated the funds and budget for this project. / ·All necessary compliance and regulatory issues have been addressed.
- 2: List the goals and desired outcomes of this training effort.
- 3: Commit to goals and objectives through agreement, consensus, and participation of all staff members. Training can only be successful if it is a team effort driven by focusing on deliverables and desired outcomes.
- 6: It is important to identify training needs before trying to implement any training solutions. A training needs analysis (TNA) is a systematic exploration of the way things are and the way they should be; the TNA will effectively target your training and development efforts and will help ensure that training interventions are well focused.
- 9: Department heads, in turn, inform their own staff that training will be offered.
- 11: Can be skipped if instructors and training are done in-house.
- 16: Optimal results begin with assessments of professional skills that identify gaps, and their causes that prevent an organization from achieving its highest goals.
- 18: Department heads, in turn, request that their own staff complete and return the skill assessment forms.
- 20: Use the matrix to place each user in the proper training session.
- 23: Assumption: / Training is done in-house; if training is outsourced, a reference to vendor participation is made.

| ID | WBS | Task | Type | Duration | Start | Finish | Predecessors | Baseline start | Baseline finish | Baseline duration | Total slack | Free slack | Constraint | Resources | Work |
| --- | --- | --- | --- | --- | --- | --- | --- | --- | --- | --- | --- | --- | --- | --- | --- |
| 31 | 2.1.7 | **Marketing Strategy** |  | 13d | 2017-06-06 | 2017-06-22 |  | 2017-06-06 | 2017-06-22 | 13d | 0d |  |  |  | 104h |
| 32 | 2.1.7.1 | Order promotional material |  | 7d | 2017-06-06 | 2017-06-14 | 25 | 2017-06-06 | 2017-06-14 | 7d | 0d |  |  | T.Res7 | 56h |
| 33 | 2.1.7.2 | Create posters and place them in high-traffic areas |  | 4d | 2017-06-13 | 2017-06-16 | 32FS-2d | 2017-06-13 | 2017-06-16 | 4d | 0d |  |  | T.Res10 | 32h |
| 34 | 2.1.7.3 | E-mail invitation to participants |  | 1d | 2017-06-21 | 2017-06-21 | 33SS | 2017-06-21 | 2017-06-21 | 1d | 531.25d | 0d | start no earlier than 2017-06-21 | T.Res5 | 8h |
| 35 | 2.1.7.4 | Arrange for catering of meals and refreshments |  | 1d | 2017-06-22 | 2017-06-22 | 34 | 2017-06-22 | 2017-06-22 | 1d | 531.25d |  |  | T.Res4 | 8h |
| 36 | 2.2 | **Training Sessions Registration** |  | 5d | 2017-06-13 | 2017-06-19 |  | 2017-06-13 | 2017-06-19 | 5d | 0d |  |  |  | 48h |
| 37 | 2.2.1 | Enroll users who registered via corporate intranet |  | 2d | 2017-06-13 | 2017-06-14 | 33SS | 2017-06-13 | 2017-06-14 | 2d | 0d |  |  | T.Res1 | 16h |
| 38 | 2.2.2 | Send out confirmations to these registration |  | 1d | 2017-06-15 | 2017-06-15 | 37 | 2017-06-15 | 2017-06-15 | 1d | 2d |  |  | T.Res1 | 8h |
| 39 | 2.2.3 | Send out prework requirements |  | 2d | 2017-06-13 | 2017-06-14 | 37SS | 2017-06-13 | 2017-06-14 | 2d | 3d |  |  | T.Res3 | 16h |
| 40 | 2.2.4 | Monitor cancellations and late requests for training |  | 1d | 2017-06-19 | 2017-06-19 | 37FS+2d | 2017-06-19 | 2017-06-19 | 1d | 0d |  |  | T.Res4 | 8h |
| 41 | 2.3 | **Schedule Instructors** |  | 3d | 2017-06-07 | 2017-06-12 |  | 2017-06-07 | 2017-06-12 | 3d | 539.75d |  |  |  | 32h |
| 42 | 2.3.1 | In-house instructors |  | 1d | 2017-06-07 | 2017-06-08 | 26 | 2017-06-07 | 2017-06-08 | 1d | 541.75d |  |  | T.Res4 | 8h |
| 43 | 2.3.2 | Outsourced instructors |  | 3d | 2017-06-07 | 2017-06-12 | 26 | 2017-06-07 | 2017-06-12 | 3d | 539.75d |  |  | T.Res10 | 24h |
| 44 | 2.4 | **Courseware Evaluations** |  | 6.5d | 2017-06-12 | 2017-06-20 |  | 2017-06-12 | 2017-06-20 | 6.5d | 533.25d |  |  |  | 32h |
| 45 | 2.4.1 | Reuse or build an end-user course evaluation form (online or paper) |  | 2d | 2017-06-19 | 2017-06-20 | 26FS+2d | 2017-06-19 | 2017-06-20 | 2d | 533.25d |  | start no earlier than 2017-06-19 | T.Res5 | 16h |
| 46 | 2.4.2 | Reuse or build an special feedback form for instructors |  | 2d | 2017-06-12 | 2017-06-14 | 26FS+3d | 2017-06-12 | 2017-06-14 | 2d | 537.75d |  |  | T.Res8 | 16h |
| 47 | 2.5 | Stage 2 - TRIP - End project commencement | milestone | 0d | 2017-06-20 | 2017-06-20 | 36FS+1d | 2017-06-20 | 2017-06-20 | 0d | 0d |  |  |  |  |
| 48 | 3 | **TRIP - Stage 3 - Project Implementation and Control** |  | 531.25d | 2017-06-23 | 2019-07-10 |  | 2017-06-23 | 2019-07-10 | 531.25d | 0d |  |  |  | 146h |
| 49 | 3.1 | Conduct training and track attendance |  | 10d | 2017-06-23 | 2017-07-06 | 47FS+2d | 2017-06-23 | 2017-07-06 | 10d | 0d |  |  | T.Res1 | 80h |
| 50 | 3.2 | **Daily Conference Call (Hold Daily Call to Address Issues)** |  | 531.25d | 2017-06-23 | 2019-07-10 |  | 2017-06-23 | 2019-07-10 | 531.25d | 0d |  |  |  | 10h |
| 51 | 3.2.1 | Call 1 |  | 1h | 2017-06-23 | 2019-06-27 | 49SS | 2017-06-23 | 2019-06-27 | 1h | 0d |  | start no earlier than 2015-06-28 | T.Res3 | 1h |
| 52 | 3.2.2 | Call 2 |  | 1h | 2019-06-28 | 2019-06-28 | 51FS+1d | 2019-06-28 | 2019-06-28 | 1h | 0d |  | start no earlier than 2015-07-03 | T.Res2 | 1h |
| 53 | 3.2.3 | Call 3 |  | 1h | 2019-07-01 | 2019-07-01 | 52FS+1d | 2019-07-01 | 2019-07-01 | 1h | 0d |  | start no earlier than 2015-07-03 | T.Res2 | 1h |
| 54 | 3.2.4 | Call 4 |  | 1h | 2019-07-02 | 2019-07-02 | 53FS+1d | 2019-07-02 | 2019-07-02 | 1h | 0d |  | start no earlier than 2015-07-03 | T.Res2 | 1h |
| 55 | 3.2.5 | Call 5 |  | 1h | 2019-07-03 | 2019-07-03 | 54FS+1d | 2019-07-03 | 2019-07-03 | 1h | 0d |  | start no earlier than 2015-07-04 | T.Res2 | 1h |
| 56 | 3.2.6 | Call 6 |  | 1h | 2019-07-04 | 2019-07-04 | 55FS+1d | 2019-07-04 | 2019-07-04 | 1h | 0d |  | start no earlier than 2015-07-05 | T.Res2 | 1h |
| 57 | 3.2.7 | Call 7 |  | 1h | 2019-07-05 | 2019-07-05 | 56FS+1d | 2019-07-05 | 2019-07-05 | 1h | 0d |  | start no earlier than 2015-07-10 | T.Res2 | 1h |
| 58 | 3.2.8 | Call 8 |  | 1h | 2019-07-08 | 2019-07-08 | 57FS+1d | 2019-07-08 | 2019-07-08 | 1h | 0d |  | start no earlier than 2015-07-10 | T.Res2 | 1h |
| 59 | 3.2.9 | Call 9 |  | 1h | 2019-07-09 | 2019-07-09 | 58 | 2019-07-09 | 2019-07-09 | 1h | 0d |  | start no earlier than 2015-07-10 | T.Res2 | 1h |
| 60 | 3.2.10 | Call 10 |  | 1h | 2019-07-10 | 2019-07-10 | 59FS+1d | 2019-07-10 | 2019-07-10 | 1h | 0d |  | start no earlier than 2015-07-11 | T.Res2 | 1h |
| 61 | 3.3 | Collect feedback and compile results |  | 2.5d | 2017-07-05 | 2017-07-07 | 49FS-2d | 2017-07-05 | 2017-07-07 | 2.5d | 408.75d | 0d |  | T.Res3 | 20h |
| 62 | 3.4 | Determine need for make up training |  | 1.5d | 2017-07-07 | 2017-07-10 | 49 | 2017-07-07 | 2017-07-10 | 1.5d | 520.75d |  |  | T.Res4 | 12h |
| 63 | 3.5 | Update department heads with training results |  | 2d | 2017-07-07 | 2017-07-11 | 61 | 2017-07-07 | 2017-07-11 | 2d | 408.75d | 0d |  | T.Res5 | 16h |
| 64 | 3.6 | Issue certificates of completion to participants |  | 1d | 2017-07-11 | 2017-07-12 | 63 | 2017-07-11 | 2017-07-12 | 1d | 408.75d | 0d |  | T.Res5 | 8h |
| 65 | 3.7 | Stage 3 - TRIP - End project implementation and control | milestone | 0d | 2017-07-12 | 2017-07-12 | 64 | 2017-07-12 | 2017-07-12 | 0d | 408.75d | 0d |  | T.Res6 |  |

Notes:
- 32: Promotional material can include custom notepads, pens, mouse pads, etc.
- 37: Enrollment and confirmations can be fully automated if done through corporate intranet.
- 39: After skills assessments are collected, there may be a need to contact individual users and ask them to perform some prep work or prework prior to their participation in training. This is to ensure that such users have satisfied the necessary prerequisites for enrollment without the need to go for separate training. These are handled on a case-by-case basis.
- 40: There may be a need for makeup sessions if a sufficient number of absent users require them.
- 46: This form is usually used to collect feedback from instructors on the quality of material, room setup, workstation performance, specific user issues, specific software issues and specific vendor issues (if applicable).
- 48: Assumption: / The rollout will take place over two weeks (ten business days), to train 70-80 users. Each session can have up to eight users for optimal learning. / This is the start of hands-on training.
- 50: The Daily Conference Call involves the instructors, vendor staff (if any) and the training coordinator. The purpose of the call is to ensure proper communication of the progress of training, as well as the escalation of any problems, software, hardware, or other issues. These conference calls are held at the end of each training day for the duration of the training rollout. They are kept to 60 minutes at most and can be completed in a shorter amount of time. / To adjust the frequency of these conference calls, using the right mouse button (right-click), click the Daily Conference Call cell you want to modify and then click Task Information; then you can modify the parameters to suit your needs. Please note that in this example, the training rollout was set to take place over a 10-day period, with a conference call at the end of each day. / The Daily Conference Calls have a constraint of Start No Earlier Than so that they can be performed at the end of each training day. Also note the dependency relationships that ensure that these tasks do take place at the end of each training day.
- 51: Conference call performed at the end of the training day. Right-click this task and click Task Information to adjust the various options.
- 52: Conference call performed at the end of the training day. Right-click this task and click Task Information to adjust the various options.
- 53: Conference call performed at the end of the training day. Right-click this task and click Task Information to adjust the various options.
- 54: Conference call performed at the end of the training day. Right-click this task and click Task Information to adjust the various options.
- 55: Conference call performed at the end of the training day. Right-click this task and click Task Information to adjust the various options.
- 56: Conference call performed at the end of the training day. Right-click this task and click Task Information to adjust the various options.
- 57: Conference call performed at the end of the training day. Right-click this task and click Task Information to adjust the various options.
- 58: Conference call performed at the end of the training day. Right-click this task and click Task Information to adjust the various options.
- 59: Conference call performed at the end of the training day. Right-click this task and click Task Information to adjust the various options.
- 60: Conference call performed at the end of the training day. Right-click this task and click Task Information to adjust the various options.
- 61: Course evaluations can be fully automated so that users complete an online form at the end of each session; this makes compiling results much easier. However, allow more time if evaluations are completed via paper forms.
- 64: When the rollout is complete, certificates of completion are sent to department heads; they are in turn given out to the participants based on specific departmental procedures (such as updating employment records or send to regulatory agencies for required compliance).

| ID | WBS | Task | Type | Duration | Start | Finish | Predecessors | Baseline start | Baseline finish | Baseline duration | Total slack | Free slack | Constraint | Resources | Work |
| --- | --- | --- | --- | --- | --- | --- | --- | --- | --- | --- | --- | --- | --- | --- | --- |
| 66 | 4 | **TRIP - Stage 4 - Project Close Out and Conclusion** |  | 113.1d | 2017-07-14 | 2017-12-21 |  | 2017-07-14 | 2017-12-21 | 113.1d | 403.65d |  |  |  | 152h |
| 67 | 4.1 | **Performance measurement through post-training review of deliverables** |  | 13.1d | 2017-07-14 | 2017-08-02 |  | 2017-07-14 | 2017-08-02 | 13.1d | 403.65d | 0d |  |  | 64h |
| 68 | 4.1.1 | Discuss evaluations, results, and process improvements with training team support staff |  | 1d | 2017-07-14 | 2017-07-17 | 65FS+2d | 2017-07-14 | 2017-07-17 | 1d | 408.75d | 5.1d |  | T.Res1 | 8h |
| 69 | 4.1.2 | Create a list of best practices and FAQ for future training endeavors |  | 3d | 2017-07-24 | 2017-07-27 | 68 | 2017-07-24 | 2017-07-27 | 3d | 403.65d | 0d | start no earlier than 2017-07-24 | T.Res1 | 24h |
| 70 | 4.1.3 | Discuss results with vendor for any improvements |  | 2d | 2017-07-27 | 2017-07-31 | 68, 69 | 2017-07-27 | 2017-07-31 | 2d | 403.65d | 0d |  | T.Res3 | 16h |
| 71 | 4.1.4 | Identify issues that were problems and improve them |  | 2d | 2017-07-31 | 2017-08-02 | 68, 69, 70 | 2017-07-31 | 2017-08-02 | 2d | 403.65d |  |  | T.Res4 | 16h |
| 72 | 4.2 | **Conduct Return On Investment (ROI) Research** |  | 10d | 2017-12-07 | 2017-12-21 |  | 2017-12-07 | 2017-12-21 | 10d | 403.65d |  |  |  | 88h |
| 73 | 4.2.1 | Send ROI forms to participants and department heads |  | 2d | 2017-12-07 | 2017-12-11 | 67FS+90d | 2017-12-07 | 2017-12-11 | 2d | 403.65d | 0d |  | T.Res5 | 16h |
| 74 | 4.2.2 | Measure ROI according to established parameters |  | 5d | 2017-12-08 | 2017-12-15 | 73FS-1d | 2017-12-08 | 2017-12-15 | 5d | 403.65d | 0d |  | T.Res6 | 40h |
| 75 | 4.2.3 | Compile results and present findings to department heads and HR and training managers |  | 4d | 2017-12-15 | 2017-12-21 | 74 | 2017-12-15 | 2017-12-21 | 4d | 403.65d | 0d |  | T.Res7 | 32h |
| 76 | 4.3 | Stage 4 - TRIP - End project close out and conclusion | milestone | 0d | 2017-12-21 | 2017-12-21 | 75 | 2017-12-21 | 2017-12-21 | 0d | 403.65d |  |  |  |  |
| 77 | 5 | Party!! For training team support staff (and vendor staff) |  | 1d | 2017-07-12 | 2017-07-13 | 65 | 2017-07-12 | 2017-07-13 | 1d | 517.75d |  |  | T.Res8 | 8h |

Notes:
- 72: Typically done three months after the completion of the training rollout.
- 73: The goal is to determine if they are using and applying what they learned. A standard training ROI form is used.
